# NCICBSecurityService

Schedule from MS Project, 2004-08-02 to 2005-03-07, A marks actual dates.
Home

## Calendars

- Standard: Mon-Fri 08:00-12:00, 13:00-17:00; Sat-Sun off.

## Resources

| Resource |
| --- |
| Vinay |
| Resource 1 |
| Brian |
| Kalpesh |
| Kunal |
| Eric |
| Charles |
| Team |
| Steve |

## Schedule

| ID | WBS | Task | Duration | Start | Finish | Predecessors | Complete | Remaining | Total slack | Constraint | Resources | Work | Actual work |
| --- | --- | --- | --- | --- | --- | --- | --- | --- | --- | --- | --- | --- | --- |
| 1 | 1 | **Security Module (Release One)** | 156d? | 2004-08-02 A | 2005-03-07 |  | 50% | 78.29d? | 0d |  |  | 7176h | 3455.49h |
| 2 | 1.1 | **Inception** | 38d | 2004-08-02 A | 2004-09-22 A |  | 100% |  |  |  |  | 512h | 512h |
| 3 | 1.1.1 | Phase I Evaluation | 7d | 2004-08-02 A | 2004-08-10 A |  | 100% |  |  | start no earlier than 2004-08-02 | Vinay; Brian | 112h | 112h |
| 4 | 1.1.2 | Interview NCICB Team Leads | 12d | 2004-08-09 A | 2004-08-24 A |  | 100% |  |  | start no earlier than 2004-08-09 | Vinay; Brian | 192h | 192h |
| 5 | 1.1.3 | Scope and Vision Document | 10d | 2004-08-30 A | 2004-09-10 A |  | 100% |  |  | start no earlier than 2004-08-30 | Brian | 80h | 80h |
| 6 | 1.1.4 | Supplentary Specifications | 3d | 2004-09-01 A | 2004-09-03 A | 4 | 100% |  |  | start no earlier than 2004-09-01 | Vinay | 24h | 24h |
| 7 | 1.1.5 | Fuctional Specifications | 5d | 2004-09-06 A | 2004-09-10 A | 6 | 100% |  |  |  | Vinay | 40h | 40h |
| 8 | 1.1.6 | Use Case Model | 5d | 2004-09-13 A | 2004-09-17 A | 7 | 100% |  |  |  | Vinay | 40h | 40h |
| 9 | 1.1.7 | Identify Risk List | 3d | 2004-09-20 A | 2004-09-22 A | 8 | 100% |  |  |  | Kalpesh | 24h | 24h |
| 10 | 1.2 | **Elaboration** | 23d? | 2004-09-27 A | 2004-10-27 |  | 81% | 4.44d? | 93d |  |  | 452h | 332h |
| 11 | 1.2.1 | **Iteration I** | 13d | 2004-09-27 A | 2004-10-13 |  | 92% | 1.08d | 103d |  |  | 152h | 148h |
| 12 | 1.2.1.1 | Level 1 - 2 Use Cases | 5d | 2004-09-27 A | 2004-10-01 A |  | 100% |  |  |  | Vinay | 40h | 40h |
| 13 | 1.2.1.2 | Risk List Priority | 3d | 2004-09-27 A | 2004-09-29 A |  | 100% |  |  |  | Vinay | 24h | 24h |
| 14 | 1.2.1.3 | Detailed Iteration Release Plan | 5d | 2004-09-27 A | 2004-10-01 |  | 95% | 0.25d | 111d |  | Vinay; Brian | 80h | 76h |
| 15 | 1.2.1.4 | **Finalize Requirements** | 9d | 2004-10-01 A | 2004-10-13 |  | 50% | 4.5d | 103d |  |  | 8h | 8h |
| 16 | 1.2.1.4.1 | Stakeholder Sign Off | 1d | 2004-10-01 | 2004-10-01 |  |  |  | 111d | start no earlier than 2004-10-01 |  |  |  |
| 17 | 1.2.1.4.2 | User Working Group Review | 1d | 2004-10-13 A | 2004-10-13 A | 16 | 100% |  |  | start no earlier than 2004-10-13 | Vinay | 8h | 8h |
| 18 | 1.2.2 | **Iteration II** | 17d? | 2004-10-05 A | 2004-10-27 |  | 73% | 4.67d? | 93d |  |  | 300h | 184h |
| 19 | 1.2.2.1 | Develop Architecture Prototype | 3d | 2004-10-25 A | 2004-10-27 A |  | 100% |  |  | start no earlier than 2004-10-25 |  |  |  |
| 20 | 1.2.2.2 | Software Architecture Document | 15d | 2004-10-05 A | 2004-10-25 |  | 70% | 4.5d | 95d | finish no earlier than 2004-10-25 | Vinay; Kunal; Eric | 276h | 168h |
| 21 | 1.2.2.3 | Architecture Review | 1d? | 2004-10-26 A | 2004-10-26 A | 20 | 100% |  |  |  | Brian; Kalpesh | 16h | 16h |
| 22 | 1.2.2.4 | Prioritize Risk List | 1d | 2004-10-26 | 2004-10-26 |  |  |  | 94d | start no earlier than 2004-10-26 | Vinay | 8h |  |
| 23 | 1.3 | Phase Review | 1d? | 2004-09-27 | 2004-09-27 |  |  |  | 115d |  | Eric; Kalpesh | 16h |  |
| 24 | 1.4 | **Construction** | 99d | 2004-09-26 A | 2005-02-10 |  | 46% | 53.07d | 17d |  |  | 5812h | 2611.49h |
| 25 | 1.4.1 | **Iteration I** | 40d | 2004-09-26 A | 2004-11-19 |  | 87% | 5.11d | 76d |  |  | 328h | 296h |
| 26 | 1.4.1.1 | Iteration Plan | 1d | 2004-10-26 A | 2004-10-26 A |  | 100% |  |  | start no earlier than 2004-10-26 | Vinay; Kunal | 16h | 16h |

| ID | WBS | Task | Type | Duration | Start | Finish | Predecessors | Complete | Remaining | Total slack | Constraint | Resources | Work | Actual work |
| --- | --- | --- | --- | --- | --- | --- | --- | --- | --- | --- | --- | --- | --- | --- |
| 27 | 1.4.1.2 | **Authentication** |  | 18d | 2004-10-27 A | 2004-11-19 |  | 87% | 2.37d | 76d |  |  | 312h | 280h |
| 28 | 1.4.1.2.1 | **Design** |  | 4d | 2004-10-27 A | 2004-11-01 A |  | 100% |  |  |  |  | 56h | 56h |
| 29 | 1.4.1.2.1.1 | **Documentation** |  | 4d | 2004-10-27 A | 2004-11-01 A |  | 100% |  |  |  |  | 56h | 56h |
| 30 | 1.4.1.2.1.1.1 | Level 3 - 4 Use Cases |  | 0.5d | 2004-10-27 A | 2004-10-27 A |  | 100% |  |  | start no earlier than 2004-10-27 | Kunal; Vinay | 8h | 8h |
| 31 | 1.4.1.2.1.1.2 | Use Case Model |  | 0.5d | 2004-10-27 A | 2004-10-27 A | 30 | 100% |  |  | start no earlier than 2004-10-27 | Vinay; Kunal | 8h | 8h |
| 32 | 1.4.1.2.1.1.3 | Working Group Use Case Review |  | 1d | 2004-10-28 A | 2004-10-28 A | 31 | 100% |  |  |  | Kalpesh | 8h | 8h |
| 33 | 1.4.1.2.1.1.4 | UML Sequence Diagram |  | 1d | 2004-10-29 A | 2004-10-29 A | 32 | 100% |  |  |  | Kunal | 8h | 8h |
| 34 | 1.4.1.2.1.1.5 | UML Class Diagram |  | 1d | 2004-11-01 A | 2004-11-01 A | 33 | 100% |  |  |  | Vinay | 8h | 8h |
| 35 | 1.4.1.2.1.1.6 | UML Activity Diagram |  | 1d | 2004-10-29 A | 2004-10-29 A |  | 100% |  |  | start no earlier than 2004-10-29 | Vinay | 8h | 8h |
| 36 | 1.4.1.2.1.1.7 | Design Review |  | 1d | 2004-11-01 A | 2004-11-01 A | 35 | 100% |  |  |  | Brian | 8h | 8h |
| 37 | 1.4.1.2.2 | **Implementation** |  | 11d | 2004-11-01 A | 2004-11-15 |  | 80% | 2.16d | 80d |  |  | 208h | 176h |
| 38 | 1.4.1.2.2.1 | Data Model Enhancement |  | 5d | 2004-11-01 A | 2004-11-05 A |  | 100% |  |  | start no earlier than 2004-11-01 | Vinay; Kalpesh | 80h | 80h |
| 39 | 1.4.1.2.2.2 | Data Model Documentation with Examples |  | 1d | 2004-11-08 A | 2004-11-08 A |  | 100% |  |  | start no earlier than 2004-11-08 | Vinay | 8h | 8h |
| 40 | 1.4.1.2.2.3 | **JAAS Authentication Modules** |  | 10d | 2004-11-02 A | 2004-11-15 |  | 72% | 2.79d | 80d |  |  | 120h | 88h |
| 41 | 1.4.1.2.2.3.1 | LDAP |  | 5d | 2004-11-02 A | 2004-11-08 A | 36 | 100% |  |  | start no earlier than 2004-11-02 | Kunal | 40h | 40h |
| 42 | 1.4.1.2.2.3.2 | RBDMS |  | 5d | 2004-11-08 A | 2004-11-12 A | 36 | 100% |  |  | finish no earlier than 2004-11-12 | Vinay | 40h | 40h |
| 43 | 1.4.1.2.2.3.3 | Junit Test Development |  | 4d | 2004-11-09 | 2004-11-12 |  |  |  | 81d | finish no earlier than 2004-11-12 | Kunal | 32h |  |
| 44 | 1.4.1.2.2.3.4 | Code Reviews |  | 0.33d | 2004-11-15 A | 2004-11-15 A | 41, 42, 43 | 100% |  |  | finish no earlier than 2004-11-15 | Brian; Kalpesh; Charles | 8h | 8h |
| 45 | 1.4.1.2.3 | **Unit Testing** |  | 4d | 2004-11-16 A | 2004-11-19 A |  | 100% |  |  |  |  | 48h | 48h |
| 46 | 1.4.1.2.3.1 | Perform Testing |  | 1d | 2004-11-16 A | 2004-11-16 A | 44 | 100% |  |  | start no earlier than 2004-11-15 | Kunal | 8h | 8h |
| 47 | 1.4.1.2.3.2 | Evaluate Results |  | 1d | 2004-11-17 A | 2004-11-17 A | 46 | 100% |  |  | start no earlier than 2004-11-16 | Eric; Vinay; Kunal | 24h | 24h |
| 48 | 1.4.1.2.3.3 | Integration Testing |  | 1d | 2004-11-18 A | 2004-11-18 A | 47 | 100% |  |  |  | Eric | 8h | 8h |
| 49 | 1.4.1.2.3.4 | User Working Group Review (SAD, Design Models) |  | 1d | 2004-11-19 A | 2004-11-19 A | 48 | 100% |  |  |  | Kalpesh | 8h | 8h |
| 50 | 1.4.1.3 | Iteration I Complete | milestone | 0d | 2004-09-26 A | 2004-09-26 |  | 41% | 0d | 116d |  |  |  |  |

| ID | WBS | Task | Type | Duration | Start | Finish | Predecessors | Complete | Remaining | Total slack | Free slack | Constraint | Resources | Work | Actual work |
| --- | --- | --- | --- | --- | --- | --- | --- | --- | --- | --- | --- | --- | --- | --- | --- |
| 51 | 1.4.2 | **Iteration II** |  | 23.5d | 2004-11-23 A | 2004-12-24 |  | 98% | 0.49d | 51.5d |  |  |  | 868h | 845.56h |
| 52 | 1.4.2.1 | Iteration Plan |  | 1d | 2004-11-30 A | 2004-11-30 A |  | 100% |  |  |  | start no earlier than 2004-11-30 | Vinay | 8h | 8h |
| 53 | 1.4.2.2 | **Authorization** |  | 23.5d | 2004-11-23 A | 2004-12-24 |  | 98% | 0.51d | 51.5d |  |  |  | 860h | 837.56h |
| 54 | 1.4.2.2.1 | **Design** |  | 6d | 2004-12-01 A | 2004-12-08 A |  | 100% |  |  |  |  |  | 64h | 64h |
| 55 | 1.4.2.2.1.1 | **Documentation** |  | 6d | 2004-12-01 A | 2004-12-08 A |  | 100% |  |  |  |  |  | 64h | 64h |
| 56 | 1.4.2.2.1.1.1 | Level 3 - 4 Use Cases |  | 1d | 2004-12-01 A | 2004-12-01 A |  | 100% |  |  |  | start no earlier than 2004-12-01 | Vinay; Kunal | 16h | 16h |
| 57 | 1.4.2.2.1.1.2 | Use Case Model |  | 1d | 2004-12-01 A | 2004-12-01 A | 52 | 100% |  |  |  | start no earlier than 2004-11-22 | Kunal | 8h | 8h |
| 58 | 1.4.2.2.1.1.3 | User Working Group Review |  | 1d | 2004-12-02 A | 2004-12-02 A | 57 | 100% |  |  |  |  | Kalpesh | 8h | 8h |
| 59 | 1.4.2.2.1.1.4 | UML Sequence Diagram |  | 1d | 2004-12-03 A | 2004-12-03 A | 58 | 100% |  |  |  |  | Kunal | 8h | 8h |
| 60 | 1.4.2.2.1.1.5 | UML Class Diagram |  | 1d | 2004-12-06 A | 2004-12-06 A | 59 | 100% |  |  |  |  | Vinay | 8h | 8h |
| 61 | 1.4.2.2.1.1.6 | UML Activity Diagram |  | 1d | 2004-12-06 A | 2004-12-06 A |  | 100% |  |  |  | start no earlier than 2004-12-06 | Vinay | 8h | 8h |
| 62 | 1.4.2.2.1.1.7 | Design Review |  | 1d | 2004-12-07 A | 2004-12-07 A | 61 | 100% |  |  |  |  | Brian | 8h | 8h |
| 63 | 1.4.2.2.1.1.8 | UML Model for EVS |  | 2d | 2004-12-07 A | 2004-12-08 A |  | 100% |  |  |  | start no earlier than 2004-12-07 |  |  |  |
| 64 | 1.4.2.2.2 | **Implementation** |  | 23.5d | 2004-11-23 A | 2004-12-24 |  | 97% | 0.63d | 51.5d |  |  |  | 796h | 773.56h |
| 65 | 1.4.2.2.2.1 | Authorization XML Schema |  | 10d | 2004-12-09 A | 2004-12-22 A |  | 100% |  |  |  | start no earlier than 2004-12-09 | Vinay; Brian | 160h | 160h |
| 66 | 1.4.2.2.2.2 | **Authorization API** |  | 23.5d | 2004-11-23 A | 2004-12-24 |  | 96% | 0.85d | 51.5d |  |  |  | 636h | 613.56h |
| 67 | 1.4.2.2.2.2.1 | Enhance Phase I Object Model |  | 7d | 2004-11-23 A | 2004-12-01 A | 38 | 100% |  |  |  | start no earlier than 2004-12-23 | Vinay | 56h | 56h |
| 68 | 1.4.2.2.2.2.2 | **develop run time API** |  | 16.5d | 2004-12-02 A | 2004-12-24 | 67 | 95% | 0.8d | 51.5d |  |  | Brian; Vinay | 580h | 557.56h |
| 69 | 1.4.2.2.2.2.2.1 | Implement AuthorizationManager Interface |  | 15d | 2004-12-02 A | 2004-12-22 A |  | 100% |  |  |  | finish no earlier than 2004-12-22 | Brian; Vinay | 240h | 240h |
| 70 | 1.4.2.2.2.2.2.2 | Junit Test Development |  | 4.5d | 2004-12-16 A | 2004-12-22 A |  | 100% |  |  |  | finish no earlier than 2004-12-22 | Brian; Vinay | 72h | 72h |
| 71 | 1.4.2.2.2.2.2.3 | Code Review |  | 1d | 2004-12-23 | 2004-12-24 | 70 |  |  | 51.5d |  |  | Charles; Steve | 16h |  |
| 72 | 1.4.2.3 | Iteration II Complete | milestone | 0d | 2004-12-21 | 2004-12-21 |  |  |  | 55d |  | start no earlier than 2004-12-21 |  |  |  |
| 73 | 1.4.3 | **Iteration III** |  | 92d | 2004-09-26 | 2005-02-01 |  |  |  | 13.5d | 0d |  |  | 448h |  |
| 74 | 1.4.3.1 | Iteration Plan |  | 1d | 2004-12-21 | 2004-12-21 |  |  |  | 17.5d | 0d | start no earlier than 2004-12-21 |  |  |  |

| ID | WBS | Task | Type | Duration | Start | Finish | Predecessors | Complete | Remaining | Total slack | Free slack | Constraint | Resources | Work | Actual work |
| --- | --- | --- | --- | --- | --- | --- | --- | --- | --- | --- | --- | --- | --- | --- | --- |
| 75 | 1.4.3.2 | **Prototype (Reference Implementation)** |  | 92d | 2004-09-26 | 2005-02-01 |  |  |  | 13.5d |  |  |  | 448h |  |
| 76 | 1.4.3.2.1 | **Implementation** |  | 92d | 2004-09-26 | 2005-02-01 |  |  |  | 13.5d |  |  |  | 368h |  |
| 77 | 1.4.3.2.1.1 | **Demo Application** |  | 92d | 2004-09-26 | 2005-02-01 |  |  |  | 13.5d |  |  |  | 368h |  |
| 78 | 1.4.3.2.1.1.1 | Use Case Development | milestone | 0d | 2004-09-26 | 2004-09-26 |  |  |  | 105.5d |  |  | Eric |  |  |
| 79 | 1.4.3.2.1.1.2 | Integrate Authentication |  | 9d | 2004-12-22 | 2005-01-03 | 74 |  |  | 13.5d | 0d | start no earlier than 2004-12-22 | Vinay; Brian | 80h |  |
| 80 | 1.4.3.2.1.1.3 | User Interface |  | 9d | 2005-01-04 | 2005-01-14 | 79 |  |  | 13.5d | 0d |  | Vinay; Brian | 144h |  |
| 81 | 1.4.3.2.1.1.4 | Finish User Interface |  | 4d | 2005-01-20 | 2005-01-25 | 122 |  |  | 13.5d | 0d |  | Vinay; Brian | 64h |  |
| 82 | 1.4.3.2.1.1.5 | Integrate Authorization |  | 5d | 2005-01-26 | 2005-02-01 | 81 |  |  | 13.5d |  |  | Vinay; Brian | 80h |  |
| 83 | 1.4.3.2.2 | **Documentation** |  | 5d | 2005-01-19 | 2005-01-25 |  |  |  | 18.5d |  |  |  | 80h |  |
| 84 | 1.4.3.2.2.1 | User Guide |  | 5d | 2005-01-19 | 2005-01-25 |  |  |  | 18.5d |  | start no earlier than 2005-01-19 | Vinay; Eric | 80h |  |
| 85 | 1.4.3.3 | Iteration III Complete | milestone | 0d | 2005-01-28 | 2005-01-28 |  |  |  | 16.5d |  | start no earlier than 2005-01-28 |  |  |  |
| 86 | 1.4.4 | **Iteration IV** |  | 84d | 2004-10-18 A | 2005-02-10 |  | 31% | 57.85d | 17d |  |  | Brian | 4168h | 1469.93h |
| 87 | 1.4.4.1 | Iteration Plan |  | 2d | 2004-10-18 | 2004-10-19 |  |  |  | 99d |  | start no earlier than 2004-10-18 | Brian | 16h |  |
| 88 | 1.4.4.2 | **User Provisioning** |  | 82d | 2004-10-20 A | 2005-02-10 |  | 32% | 56.11d | 17d |  |  | Brian | 3512h | 1270.69h |
| 89 | 1.4.4.2.1 | **Design** |  | 27d | 2004-10-20 A | 2004-11-25 A |  | 100% |  |  |  |  | Brian | 504h | 504h |
| 90 | 1.4.4.2.1.1 | **Documentation** |  | 27d | 2004-10-20 A | 2004-11-25 A |  | 100% |  |  |  |  | Brian | 288h | 288h |
| 91 | 1.4.4.2.1.1.1 | Level 3 - 4 Use Cases |  | 1d | 2004-10-27 A | 2004-10-27 A | 87 | 100% |  |  |  | start no earlier than 2004-10-27 | Brian | 8h | 8h |
| 92 | 1.4.4.2.1.1.2 | Use Case Model |  | 6d | 2004-10-20 A | 2004-10-27 A | 87 | 100% |  |  |  | finish no earlier than 2004-10-27 | Brian | 48h | 48h |
| 93 | 1.4.4.2.1.1.3 | Gather Requirements |  | 5d | 2004-10-28 A | 2004-11-03 A | 92 | 100% |  |  |  |  |  |  |  |
| 94 | 1.4.4.2.1.1.4 | Create DDL for mysql |  | 1d | 2004-11-10 A | 2004-11-10 A |  | 100% |  |  |  | start no earlier than 2004-11-10 |  |  |  |
| 95 | 1.4.4.2.1.1.5 | Generate Hibernate Mappings |  | 1d | 2004-11-22 A | 2004-11-22 A | 94 | 100% |  |  |  |  |  |  |  |
| 96 | 1.4.4.2.1.1.6 | Generate Hibernate Mappings |  | 1d | 2004-11-23 A | 2004-11-23 A | 95 | 100% |  |  |  |  |  |  |  |
| 97 | 1.4.4.2.1.1.7 | UML Class Diagram |  | 1d | 2004-11-24 A | 2004-11-24 A | 96 | 100% |  |  |  |  | Brian | 8h | 8h |
| 98 | 1.4.4.2.1.1.8 | Design Review |  | 1d | 2004-11-25 A | 2004-11-25 A | 97 | 100% |  |  |  | finish no earlier than 2004-11-15 | Eric | 8h | 8h |

Notes:
- 80: Gap of a week exists. Evaluate again when Iteration 3 begins

| ID | WBS | Task | Type | Duration | Start | Finish | Predecessors | Complete | Remaining | Total slack | Free slack | Constraint | Resources | Work | Actual work |
| --- | --- | --- | --- | --- | --- | --- | --- | --- | --- | --- | --- | --- | --- | --- | --- |
| 99 | 1.4.4.2.2 | **Implementation** |  | 38d | 2004-11-29 A | 2005-01-19 |  | 26% | 28.21d | 33d |  |  | Brian; Vinay | 2264h | 569.7h |
| 100 | 1.4.4.2.2.1 | Create Hibernate Mappings |  | 4d | 2004-12-03 A | 2004-12-08 A |  | 100% |  |  |  | start no earlier than 2004-12-03 | Brian; Vinay | 64h | 64h |
| 101 | 1.4.4.2.2.2 | Create Roles |  | 3.75d | 2004-11-29 A | 2004-12-10 A | 100 | 100% |  |  |  | start no earlier than 2004-11-29 | Brian; Vinay | 40h | 40h |
| 102 | 1.4.4.2.2.3 | Modify Roles |  | 2.5d | 2004-12-10 A | 2004-12-14 A | 101 | 100% |  |  |  |  | Brian; Vinay | 40h | 40h |
| 103 | 1.4.4.2.2.4 | Create Privileges |  | 1.5d | 2004-12-14 A | 2004-12-16 A | 102 | 100% |  |  |  |  | Brian; Vinay | 24h | 24h |
| 104 | 1.4.4.2.2.5 | Modify Privileges |  | 1.5d | 2004-12-16 A | 2004-12-17 A | 103 | 100% |  |  |  |  | Brian; Vinay | 24h | 24h |
| 105 | 1.4.4.2.2.6 | Assign Privileges to Roles |  | 1.5d | 2004-12-17 A | 2004-12-21 A | 104 | 100% |  |  |  |  | Brian; Vinay | 24h | 24h |
| 106 | 1.4.4.2.2.7 | Create Protection Elements |  | 1d | 2004-12-21 A | 2004-12-22 A | 105 | 100% |  |  |  |  | Brian; Vinay | 16h | 16h |
| 107 | 1.4.4.2.2.8 | Modify Protection Elements |  | 1d | 2004-12-22 A | 2004-12-23 A | 106 | 100% |  |  |  |  | Brian [133.3%]; Vinay | 16h | 16h |
| 108 | 1.4.4.2.2.9 | Create Protection Group |  | 1d | 2004-12-23 A | 2004-12-24 A | 107 | 100% |  |  |  |  | Brian [33.3%]; Vinay | 16h | 16h |
| 109 | 1.4.4.2.2.10 | Modify Protection Group |  | 1d | 2004-12-24 A | 2004-12-27 A | 108 | 100% |  |  |  |  | Brian [11.1%]; Vinay | 16h | 16h |
| 110 | 1.4.4.2.2.11 | Assign Protection Elements to Groups |  | 1d | 2004-12-27 A | 2004-12-28 A | 109 | 100% |  |  |  |  | Brian [33.3%]; Vinay | 16h | 16h |
| 111 | 1.4.4.2.2.12 | Assign Protection Elements to Users |  | 1d | 2005-01-04 A | 2005-01-04 A |  | 100% |  |  |  | start no earlier than 2005-01-04 | Brian; Vinay | 16h | 16h |
| 112 | 1.4.4.2.2.13 | Assign Protection Group to User Roles |  | 1d | 2005-01-05 A | 2005-01-05 A | 111 | 100% |  |  |  |  | Brian; Vinay | 16h | 16h |
| 113 | 1.4.4.2.2.14 | **Struts Interface** |  | 31d | 2004-12-03 A | 2005-01-14 |  | 12% | 27.28d | 3d | 0d |  | Kunal; Eric | 896h | 93.36h |
| 114 | 1.4.4.2.2.14.1 | Design HTML/JSP Pages |  | 20d | 2004-12-03 | 2004-12-30 |  |  |  | 14d |  | start no earlier than 2004-12-03 | Kunal; Eric | 200h |  |
| 115 | 1.4.4.2.2.14.2 | Develop Struts Actions, Forms, Config, Validation |  | 30d | 2004-12-06 A | 2005-01-14 |  | 20% | 24d | 3d | 0d | finish no earlier than 2005-01-14 | Kunal | 240h | 48h |
| 116 | 1.4.4.2.2.15 | Code Reviews (Onging Task) |  | 27d | 2004-11-30 | 2005-01-05 |  |  |  | 43d |  | finish no earlier than 2005-01-05 | Vinay; Brian | 368h |  |
| 117 | 1.4.4.2.2.16 | **Testing** |  | 3d | 2005-01-14 | 2005-01-19 |  |  |  | 3d | 0d |  | Brian | 96h |  |
| 118 | 1.4.4.2.2.16.1 | Unit Testing Complete | milestone | 0d | 2005-01-14 | 2005-01-14 | 113, 115 |  |  | 3d | 0d | start no earlier than 2004-12-15 | Kunal |  |  |
| 119 | 1.4.4.2.2.16.2 | **Integration Testing** |  | 3d | 2005-01-17 | 2005-01-19 | 118 |  |  | 3d | 0d |  |  | 48h |  |
| 120 | 1.4.4.2.2.16.2.1 | Testing |  | 3d | 2005-01-17 | 2005-01-19 |  |  |  | 3d |  |  | Eric | 24h |  |
| 121 | 1.4.4.2.2.16.2.2 | Defect Fixes |  | 3d | 2005-01-17 | 2005-01-19 |  |  |  | 3d | 0d |  | Kunal | 24h |  |
| 122 | 1.4.4.2.2.16.3 | **Integration Testing Authorization** |  | 3d | 2005-01-17 | 2005-01-19 | 118, 80 |  |  | 13.5d | 0d |  |  | 24h |  |
| 123 | 1.4.4.2.2.16.3.1 | Testing |  | 1d | 2005-01-17 | 2005-01-17 |  |  |  | 13.5d | 0d |  | Vinay | 8h |  |
| 124 | 1.4.4.2.2.16.3.2 | Defect Fixes |  | 2d | 2005-01-18 | 2005-01-19 | 123 |  |  | 13.5d |  |  | Vinay | 16h |  |
| 125 | 1.4.4.2.3 | User Working Group Review |  | 1d | 2005-01-20 | 2005-01-20 | 121 |  |  | 32d |  |  | Brian | 8h |  |

| ID | WBS | Task | Type | Duration | Start | Finish | Predecessors | Total slack | Free slack | Constraint | Resources | Work |
| --- | --- | --- | --- | --- | --- | --- | --- | --- | --- | --- | --- | --- |
| 126 | 1.4.4.2.4 | **Load Testing** |  | 4d | 2005-01-20 | 2005-01-25 |  | 17d | 0d |  |  | 16h |
| 127 | 1.4.4.2.4.1 | Configuration |  | 2d | 2005-01-20 | 2005-01-21 | 117 | 17d | 0d |  | Eric | 16h |
| 128 | 1.4.4.2.4.2 | Testing |  | 2d | 2005-01-24 | 2005-01-25 | 127 | 17d |  |  |  |  |
| 129 | 1.4.4.2.5 | **Documentation** |  | 12d | 2005-01-26 | 2005-02-10 |  | 17d |  |  |  | 96h |
| 130 | 1.4.4.2.5.1 | User Guide |  | 12d | 2005-01-26 | 2005-02-10 | 126 | 17d |  | start no earlier than 2005-01-21 | Eric | 96h |
| 131 | 1.4.4.3 | Iteration IV Complete | milestone | 0d | 2005-01-14 | 2005-01-14 |  | 37d |  | start no earlier than 2005-01-14 |  |  |
| 132 | 1.5 | **Transition** |  | 41d | 2005-01-10 | 2005-03-07 |  | 0d |  |  |  | 384h |
| 133 | 1.5.1 | **Iteration I** |  | 27.5d | 2005-01-10 | 2005-02-16 |  | 11d |  |  |  | 296h |
| 134 | 1.5.1.1 | System Integration Document |  | 12d | 2005-01-10 | 2005-01-25 |  | 21d | 0d | start no earlier than 2005-01-10 | Vinay | 96h |
| 135 | 1.5.1.2 | caCore Technical Guide |  | 8d | 2005-01-26 | 2005-02-04 | 134 | 21d |  |  |  |  |
| 136 | 1.5.1.3 | **Integration Pilot (Release One)** |  | 19.5d | 2005-01-20 | 2005-02-16 |  | 3d |  |  |  | 200h |
| 137 | 1.5.1.3.1 | **Client Implementation** |  | 9d | 2005-01-20 | 2005-02-01 | 119 | 3d |  |  |  | 72h |
| 138 | 1.5.1.3.1.1 | Design |  | 2d | 2005-01-20 | 2005-01-21 |  | 3d | 0d | start no earlier than 2005-01-12 | Vinay | 16h |
| 139 | 1.5.1.3.1.2 | Development |  | 5d | 2005-01-24 | 2005-01-28 | 138 | 3d | 0d |  | Kunal | 40h |
| 140 | 1.5.1.3.1.3 | Testing |  | 2d | 2005-01-31 | 2005-02-01 | 139 | 3d | 0d |  | Kunal | 16h |
| 141 | 1.5.1.3.2 | Integration Testing |  | 5d | 2005-02-02 | 2005-02-08 | 140, 73 | 13.5d | 0d | start no earlier than 2005-01-25 | Vinay; Eric | 80h |
| 142 | 1.5.1.3.3 | Evaluate Results |  | 0.5d | 2005-02-09 | 2005-02-09 | 141 | 13.5d | 0d |  | Vinay; Eric | 8h |
| 143 | 1.5.1.3.4 | Apply Needed Enhancements |  | 5d | 2005-02-09 | 2005-02-16 | 142 | 13.5d |  |  | Vinay | 40h |
| 144 | 1.5.1.4 | Iteration I Complete | milestone | 0d | 2005-02-15 | 2005-02-15 |  | 15d |  | start no earlier than 2005-02-15 |  |  |
| 145 | 1.5.2 | **Iteration II** |  | 9d | 2005-02-15 | 2005-02-28 |  | 6d |  |  |  | 88h |
| 146 | 1.5.2.1 | Staging |  | 5d | 2005-02-15 | 2005-02-21 |  | 10d |  | start no earlier than 2005-02-15 | Vinay | 40h |
| 147 | 1.5.2.2 | Testing |  | 3d | 2005-02-21 | 2005-02-23 |  | 8d |  | start no earlier than 2005-02-21 | Vinay; Eric | 48h |
| 148 | 1.5.2.3 | Iteration II Complete | milestone | 0d | 2005-02-28 | 2005-02-28 |  | 6d |  | start no earlier than 2005-02-28 |  |  |
| 149 | 1.5.3 | caCore Release 3 |  | 1d | 2005-03-07 | 2005-03-07 |  | 0d |  | start no earlier than 2005-03-07 |  |  |
