# CSM 3.1

Schedule from MS Project, 2005-08-01 to 2006-02-20, A marks actual dates.
NCI

## Calendars

- Standard: Mon-Fri 08:00-12:00, 13:00-17:00; Sat-Sun off. Exceptions (off unless hours are given): 2005-11-11, 2005-11-24 to 2005-11-25, 2005-12-26, 2006-01-02.

## Resources

| Resource |
| --- |
| Vinay |
| Kunal |
| Charles |
| Eric |
| Avinash |
| 100 |
| SAIC |
| Resource 4 |
| Team |

## Schedule

| ID | WBS | Task | Type | Duration | Start | Finish | Predecessors | Complete | Remaining | Total slack | Constraint | Resources | Work | Actual work |
| --- | --- | --- | --- | --- | --- | --- | --- | --- | --- | --- | --- | --- | --- | --- |
| 1 | 1 | **CSM Post Release** |  | 35.25d | 2005-08-01 A | 2005-09-19 |  | 59% | 14.42d | 105d |  |  | 815.96h | 615.96h |
| 2 | 1.1 | **Production Support** |  | 22d | 2005-08-01 | 2005-08-30 |  |  |  | 118.25d |  |  | 132h |  |
| 3 | 1.1.1 | Support Activities |  | 22d | 2005-08-01 | 2005-08-30 |  |  |  | 118.25d |  | Vinay [25%]; Kunal [25%]; Eric [25%] | 132h |  |
| 4 | 1.2 | **Meetings** |  | 3.2d | 2005-08-01 A | 2005-08-04 |  | 80% | 0.64d | 137.05d |  |  | 12.8h | 9.6h |
| 5 | 1.2.1 | Status Meeting |  | 0.1d | 2005-08-01 | 2005-08-01 |  |  |  | 140.15d |  | Vinay; Kunal; Charles; Eric | 3.2h |  |
| 6 | 1.2.2 | IBM |  | 0.2d | 2005-08-01 A | 2005-08-01 A |  | 100% |  |  |  | Vinay; Kunal; Charles | 4.8h | 4.8h |
| 7 | 1.2.3 | IBM |  | 0.2d | 2005-08-04 A | 2005-08-04 A |  | 100% |  |  | start no earlier than 2005-08-04 | Vinay; Kunal; Charles | 4.8h | 4.8h |
| 8 | 1.3 | Post Release Analysis |  | 1d | 2005-08-11 A | 2005-08-11 A |  | 100% |  |  | start no earlier than 2005-08-11 | Kunal [25%]; Vinay [75%]; Eric [75%] | 14h | 14h |
| 9 | 1.4 | **Presentations/Conferences** |  | 15d | 2005-08-01 A | 2005-08-19 A |  | 100% |  |  |  |  | 184.4h | 184.4h |
| 10 | 1.4.1 | **Preparation** |  | 10d | 2005-08-01 A | 2005-08-12 A |  | 100% |  |  |  |  | 82.4h | 82.4h |
| 11 | 1.4.1.1 | Developer's Boot Camp Presentation |  | 3d | 2005-08-01 A | 2005-08-03 A |  | 100% |  |  |  | Kunal [25%]; Vinay [75%]; Eric [75%] | 22h | 22h |
| 12 | 1.4.1.2 | caCore Architecture Meeting |  | 2d | 2005-08-04 A | 2005-08-05 A | 11 | 100% |  |  |  | Kunal [25%]; Vinay [75%]; Eric [75%] | 28h | 28h |
| 13 | 1.4.1.3 | Review |  | 0.3d | 2005-08-09 A | 2005-08-09 A |  | 100% |  |  | start no earlier than 2005-08-09 | Kunal [75%]; Vinay [75%]; Eric [75%] | 5.4h | 5.4h |
| 14 | 1.4.1.4 | Update |  | 2.5d | 2005-08-09 A | 2005-08-11 A | 13 | 100% |  |  |  | Eric [75%] | 15h | 15h |
| 15 | 1.4.1.5 | Installation Test |  | 1d | 2005-08-12 A | 2005-08-12 A |  | 100% |  |  | start no earlier than 2005-08-12 | Vinay [75%]; Kunal [75%] | 12h | 12h |
| 16 | 1.4.2 | Developer Boot Camp Presentation (NCICB) |  | 1d | 2005-08-15 A | 2005-08-15 A | 10 | 100% |  |  |  | Vinay [75%]; Kunal [75%] | 12h | 12h |
| 17 | 1.4.3 | caBig Architecture F2F |  | 3d | 2005-08-16 A | 2005-08-18 A | 16 | 100% |  |  |  | Vinay [75%]; Kunal [75%]; Eric [75%] | 54h | 54h |
| 18 | 1.4.4 | Developer Boot Camp |  | 2d | 2005-08-18 A | 2005-08-19 A |  | 100% |  |  | start no earlier than 2005-08-18 | Vinay [75%]; Kunal [75%]; Eric [75%] | 36h | 36h |
| 19 | 1.5 | **Best Practices** |  | 3d | 2005-08-08 A | 2005-08-11 A |  | 100% |  |  |  |  | 18h | 18h |
| 20 | 1.5.1 | Create SOP Documents |  | 3d | 2005-08-08 A | 2005-08-11 A | 13FS-1d | 100% |  |  |  | Vinay [75%] | 18h | 18h |
| 21 | 1.6 | SDK Defect Fix/Documentation Update |  | 3d | 2005-08-03 A | 2005-08-05 A |  | 100% |  |  | finish no earlier than 2005-08-08 | Kunal | 18h | 18h |
| 22 | 1.7 | SdK Testing/Documentation Update |  | 5d | 2005-08-08 A | 2005-08-12 A | 21 | 100% |  |  |  | Kunal [50%]; Eric [50%] | 21.33h | 21.33h |
| 23 | 1.8 | Production | milestone | 0d | 2005-08-25 A | 2005-08-25 A |  | 100% |  |  | start no earlier than 2005-08-25 | Kunal |  |  |
| 24 | 1.9 | **Open Source Initiative** |  | 4d | 2005-08-22 A | 2005-08-25 |  | 25% | 3d | 121.25d |  |  | 24h | 6h |
| 25 | 1.9.1 | Define Approach |  | 1d | 2005-08-22 A | 2005-08-22 A | 18 | 100% |  |  |  | Kunal [75%] | 6h | 6h |
| 26 | 1.9.2 | List OS Items for Development |  | 3d | 2005-08-23 | 2005-08-25 | 25 |  |  | 121.25d |  | Kunal [75%] | 18h |  |

| ID | WBS | Task | Type | Duration | Start | Finish | Predecessors | Complete | Remaining | Total slack | Free slack | Constraint | Resources | Work | Actual work |
| --- | --- | --- | --- | --- | --- | --- | --- | --- | --- | --- | --- | --- | --- | --- | --- |
| 27 | 1.10 | **Reference Implementation** |  | 1d | 2005-08-02 A | 2005-08-02 A |  | 100% |  |  |  |  |  | 6h | 6h |
| 28 | 1.10.1 | WrapUp Work |  | 1d | 2005-08-02 A | 2005-08-02 A |  | 100% |  |  |  | start no earlier than 2005-08-02 | Kunal [75%] | 6h | 6h |
| 29 | 1.11 | **Requirement Gathering/Scope** |  | 18.25d | 2005-08-22 A | 2005-09-15 | 9 | 99% | 0d | 0d |  |  |  | 308.5h | 308.5h |
| 30 | 1.11.1 | Gather/Writeup Requirements |  | 7d | 2005-08-22 A | 2005-08-30 A |  | 100% |  |  |  |  | Vinay [75%]; Kunal [75%]; Eric [75%] | 126h | 126h |
| 31 | 1.11.2 | Internal Review/Updates |  | 2d | 2005-08-31 A | 2005-09-01 A | 30 | 100% |  |  |  |  | Vinay [75%]; Kunal [75%]; Eric [75%] | 36h | 36h |
| 32 | 1.11.3 | Estimation |  | 5d | 2005-09-02 A | 2005-09-08 A | 31 | 100% |  |  |  |  | Vinay [75%]; Kunal [75%]; Eric [75%] | 90h | 90h |
| 33 | 1.11.4 | Requirements Prioritization |  | 0.25d | 2005-09-09 A | 2005-09-09 A | 32 | 100% |  |  |  |  | Avinash; Vinay [75%]; Kunal [75%]; Charles; Eric [75%] | 8.5h | 8.5h |
| 34 | 1.11.5 | Scope Document Development |  | 4d | 2005-09-09 A | 2005-09-15 A | 33 | 100% |  |  |  |  | Vinay [50%]; Kunal [50%]; Eric [50%] | 48h | 48h |
| 35 | 1.11.6 | Scope Document SignOff | milestone | 0d | 2005-09-15 | 2005-09-15 | 34 |  |  | 0d |  |  | Avinash; Charles; Vinay |  |  |
| 36 | 1.12 | **Planning** |  | 17.25d | 2005-08-25 A | 2005-09-19 |  | 31% | 11.93d | 105d |  |  |  | 76.93h | 30.13h |
| 37 | 1.12.1 | Project Plan |  | 10d | 2005-08-25 | 2005-09-07 |  |  |  | 112.05d | 0d | start no earlier than 2005-08-25 | Charles [10%] | 8h |  |
| 38 | 1.12.2 | Project Plan Review |  | 0.2d | 2005-09-08 | 2005-09-08 | 37 |  |  | 112.05d |  |  | Charles; Avinash; Vinay | 4.8h |  |
| 39 | 1.12.3 | Task Plan |  | 5d | 2005-09-09 A | 2005-09-16 A | 33 | 100% |  |  |  |  | Charles [10%]; Vinay [25%]; Kunal [25%]; Eric [25%] | 30.13h | 30.13h |
| 40 | 1.12.4 | Task Plan Review |  | 1d | 2005-09-16 | 2005-09-19 | 39 |  |  | 105d | 0d |  | Avinash; Vinay [75%]; Kunal [75%]; Charles; Eric [75%] | 34h |  |
| 41 | 1.12.5 | Task Plan SignOff | milestone | 0d | 2005-09-19 | 2005-09-19 | 40 |  |  | 105d | 0d |  | Avinash; Charles |  |  |
| 42 | 1.12.6 | Project Plan SignOff | milestone | 0d | 2005-09-19 | 2005-09-19 | 41 |  |  | 105d |  |  | Avinash; Charles |  |  |
| 43 | 2 | **CSM 3.1** |  | 107d | 2005-09-15 A | 2006-02-20 | 35 |  | 106.57d | 0d |  |  |  | 2970.48h | 16h |
| 44 | 2.1 | Production Support |  | 100d | 2005-09-15 | 2006-02-20 |  |  |  | 0d |  |  | Kunal [25%] | 200h |  |
| 45 | 2.2 | Best Practices/SOPs |  | 100d | 2005-09-15 | 2006-02-09 |  |  |  | 7d |  |  | Vinay [50%] | 400h |  |
| 46 | 2.3 | **Elaboration Phase** |  | 55.4d | 2005-09-15 A | 2005-12-06 | 35 | 2% | 54.08d | 51.6d |  |  |  | 671.24h | 16h |
| 47 | 2.3.1 | **Iteration 1** |  | 9.2d | 2005-09-15 A | 2005-09-28 |  | 12% | 8.09d | 32d |  |  |  | 127.6h | 16h |
| 48 | 2.3.1.1 | **Analysis & Design** |  | 9.2d | 2005-09-15 A | 2005-09-28 |  | 12% | 8.09d | 32d |  |  |  | 127.6h | 16h |
| 49 | 2.3.1.1.1 | **SDK Integration** |  | 9.2d | 2005-09-15 A | 2005-09-28 |  | 12% | 8.09d | 32d |  |  |  | 127.6h | 16h |
| 50 | 2.3.1.1.1.1 | Documentation & Training Bootcamp |  | 2d | 2005-09-15 A | 2005-09-19 A |  | 100% |  |  |  |  | Eric | 16h | 16h |

| ID | WBS | Task | Type | Duration | Start | Finish | Predecessors | Total slack | Free slack | Constraint | Resources | Work |
| --- | --- | --- | --- | --- | --- | --- | --- | --- | --- | --- | --- | --- |
| 51 | 2.3.1.1.1.2 | **Detail Use Case Development** |  | 7.2d | 2005-09-19 | 2005-09-28 |  | 32d | 0d |  |  | 60.8h |
| 52 | 2.3.1.1.1.2.1 | Use Case # |  | 6d | 2005-09-19 | 2005-09-27 | 50 | 32d | 0d |  | Eric | 48h |
| 53 | 2.3.1.1.1.2.2 | Use Case Review |  | 0.2d | 2005-09-27 | 2005-09-27 | 52 | 32d | 0d |  | Eric; Kunal; Vinay | 4.8h |
| 54 | 2.3.1.1.1.2.3 | Update/Baseline Use Cases |  | 1d | 2005-09-27 | 2005-09-28 | 53 | 32d |  |  | Eric | 8h |
| 55 | 2.3.1.1.1.3 | **Design** |  | 5.4d | 2005-09-15 | 2005-09-22 |  | 3.85d |  |  |  | 50.8h |
| 56 | 2.3.1.1.1.3.1 | Detail Design |  | 4d | 2005-09-15 | 2005-09-21 |  | 7.85d | 0d |  | Vinay [50%] | 16h |
| 57 | 2.3.1.1.1.3.2 | Detail Design |  | 2d | 2005-09-15 | 2005-09-19 |  | 6.85d | 0d |  | Kunal [75%] | 12h |
| 58 | 2.3.1.1.1.3.3 | SAD Update Draft Complete | milestone | 0d | 2005-09-21 | 2005-09-21 | 56, 57 | 6.7d | 0d |  | Vinay [50%] |  |
| 59 | 2.3.1.1.1.3.4 | Design Review |  | 0.2d | 2005-09-21 | 2005-09-21 | 58 | 6.7d | 0d |  | Kunal; Vinay; SAIC; Avinash | 6.4h |
| 60 | 2.3.1.1.1.3.5 | Update Design |  | 1d | 2005-09-21 | 2005-09-22 | 59 | 6.7d | 0d |  | Vinay [50%]; Kunal [75%] | 10h |
| 61 | 2.3.1.1.1.3.6 | Design Baselined/Sign Off |  | 0.2d | 2005-09-22 | 2005-09-22 | 60 | 6.7d | 0d |  | Kunal; Vinay; SAIC; Avinash | 6.4h |
| 62 | 2.3.2 | **Iteration 2** |  | 10.2d | 2005-09-19 | 2005-10-03 |  | 3.85d |  |  |  | 73.04h |
| 63 | 2.3.2.1 | **Analysis & Design** |  | 10.2d | 2005-09-19 | 2005-10-03 |  | 3.85d |  |  |  | 73.04h |
| 64 | 2.3.2.1.1 | **Enhanced Logging** |  | 10.2d | 2005-09-19 | 2005-10-03 |  | 3.85d |  |  |  | 73.04h |
| 65 | 2.3.2.1.1.1 | **Detail Use Case Development** |  | 3d | 2005-09-28 | 2005-10-03 |  | 32d |  |  |  | 24h |
| 66 | 2.3.2.1.1.1.1 | Use Case # |  | 3d | 2005-09-28 | 2005-10-03 | 51 | 32d | 0d |  | Eric | 24h |
| 67 | 2.3.2.1.1.2 | **Design** |  | 6.4d | 2005-09-19 | 2005-09-27 |  | 3.85d |  |  |  | 49.04h |
| 68 | 2.3.2.1.1.2.1 | Use Case # |  | 5d | 2005-09-19 | 2005-09-26 | 57 | 5.7d | 0d |  | Kunal [75%] | 30h |
| 69 | 2.3.2.1.1.2.2 | Update CSM SAD Draft Complete | milestone | 0d | 2005-09-26 | 2005-09-26 | 68 | 5.7d | 0d |  | Kunal [75%] |  |
| 70 | 2.3.2.1.1.2.3 | Design Review |  | 0.2d | 2005-09-26 | 2005-09-26 | 69 | 6.85d | 0d |  | Kunal; Vinay; Eric; Charles | 5.04h |
| 71 | 2.3.2.1.1.2.4 | Update Design |  | 1d | 2005-09-26 | 2005-09-27 | 70 | 5.7d | 0d |  | Kunal [75%] | 6h |
| 72 | 2.3.2.1.1.2.5 | Design Baselined/Sign Off |  | 0.2d | 2005-09-27 | 2005-09-27 | 71 | 6.85d | 0d |  | Kunal; Vinay; Eric; Charles; Avinash | 8h |
| 73 | 2.3.3 | **Iteration 3** |  | 37d | 2005-10-03 | 2005-11-28 |  | 32d |  |  |  | 206.6h |
| 74 | 2.3.3.1 | **Analysis & Design** |  | 37d | 2005-10-03 | 2005-11-28 |  | 32d |  |  |  | 206.6h |
| 75 | 2.3.3.1.1 | **Hibernate Upgrade** |  | 13.9d | 2005-10-17 | 2005-11-03 |  | 29.1d |  |  |  | 121.6h |
| 76 | 2.3.3.1.1.1 | Define Approach |  | 12d | 2005-10-17 | 2005-11-01 |  | 29.1d | 0d | start no earlier than 2005-10-17 | Resource 4 | 96h |
| 77 | 2.3.3.1.1.2 | Approach Review |  | 0.2d | 2005-11-02 | 2005-11-02 | 76 | 29.1d | 0d |  | Kunal [75%]; Charles; Eric; Vinay | 6h |
| 78 | 2.3.3.1.1.3 | Update Approach |  | 1.5d | 2005-11-02 | 2005-11-03 | 77 | 29.1d | 0d |  | Resource 4 | 12h |
| 79 | 2.3.3.1.1.4 | Approach Baselined/Sign Off |  | 0.2d | 2005-11-03 | 2005-11-03 | 78 | 29.1d | 0d |  | Kunal [75%]; Charles; Eric; Vinay; Resource 4 | 7.6h |

| ID | WBS | Task | Type | Duration | Start | Finish | Predecessors | Total slack | Free slack | Constraint | Resources | Work |
| --- | --- | --- | --- | --- | --- | --- | --- | --- | --- | --- | --- | --- |
| 80 | 2.3.3.1.2 | **Authorization Caching** |  | 37d | 2005-10-03 | 2005-11-28 |  | 32d |  |  |  | 85h |
| 81 | 2.3.3.1.2.1 | **Detail Use Case Development** |  | 5d | 2005-10-03 | 2005-10-10 |  | 32d |  |  |  | 40h |
| 82 | 2.3.3.1.2.1.1 | Use Case # |  | 5d | 2005-10-03 | 2005-10-10 | 66 | 32d | 0d |  | Eric | 40h |
| 83 | 2.3.3.1.2.2 | **Design** |  | 5.8d | 2005-11-16 | 2005-11-28 |  | 35.8d |  |  |  | 45h |
| 84 | 2.3.3.1.2.2.1 | Detail Design |  | 5d | 2005-11-16 | 2005-11-23 | 115 | 35.8d | 0d | start no earlier than 2005-10-17 | Kunal [75%] | 30h |
| 85 | 2.3.3.1.2.2.2 | Design Doc Draft Complete | milestone | 0d | 2005-11-23 | 2005-11-23 | 84 | 35.8d | 0d |  | Kunal [75%] |  |
| 86 | 2.3.3.1.2.2.3 | Design Review |  | 0.3d | 2005-11-23 | 2005-11-23 | 85 | 35.8d | 0d |  | Kunal; Vinay; Eric; Charles; Resource 4 | 12h |
| 87 | 2.3.3.1.2.2.4 | Update Design |  | 0.5d | 2005-11-23 | 2005-11-28 | 86 | 35.8d | 0d |  | Kunal [75%] | 3h |
| 88 | 2.3.3.1.2.2.5 | Design Baselined/Sign Off | milestone | 0d | 2005-11-28 | 2005-11-28 | 87 | 35.8d | 0d |  | Kunal [75%] |  |
| 89 | 2.3.4 | **Iteration 4** |  | 38.2d | 2005-10-10 | 2005-12-06 |  | 32d |  |  |  | 264h |
| 90 | 2.3.4.1 | **Test Plan** |  | 38.2d | 2005-10-10 | 2005-12-06 | 82 | 32d |  |  |  | 144h |
| 91 | 2.3.4.1.1 | SDK Integration |  | 5d | 2005-10-10 | 2005-10-17 |  | 32d | 0d |  | Eric | 40h |
| 92 | 2.3.4.1.2 | Enhanced Logging |  | 4d | 2005-11-16 | 2005-11-22 | 115 | 51.6d | 0d |  | Eric | 32h |
| 93 | 2.3.4.1.3 | Authorization Caching |  | 4d | 2005-11-22 | 2005-11-30 | 92 | 51.6d | 0d |  | Eric | 32h |
| 94 | 2.3.4.1.4 | Regression Tests for Hibernate Upgrade |  | 4d | 2005-11-30 | 2005-12-06 | 93 | 51.6d |  |  | Eric | 32h |
| 95 | 2.3.4.1.5 | SOP Check (existing and new) |  | 1d | 2005-10-17 | 2005-10-18 | 91 | 32d | 0d |  | Eric | 8h |
| 96 | 2.3.4.2 | Cummalative Requirements Document |  | 9d | 2005-10-18 | 2005-10-31 | 95 | 32d | 0d |  | Eric | 72h |
| 97 | 2.3.4.3 | Traceability Matrix |  | 6d | 2005-10-31 | 2005-11-08 | 96 | 32d | 0.2d |  | Eric | 48h |
| 98 | 2.4 | **Construction Phase** |  | 84.75d | 2005-09-22 | 2006-01-26 |  | 4.85d |  |  |  | 1439.52h |
| 99 | 2.4.1 | **Iteration 1** |  | 38d | 2005-09-22 | 2005-11-16 |  | 4.85d |  |  |  | 371h |
| 100 | 2.4.1.1 | **SDK Integration** |  | 38d | 2005-09-22 | 2005-11-16 |  | 4.85d |  |  |  | 371h |
| 101 | 2.4.1.1.1 | **Development and Unit Test** |  | 31d | 2005-09-22 | 2005-11-04 |  | 4.85d |  |  |  | 289h |
| 102 | 2.4.1.1.1.1 | Merging ListProxy and SDKLIistProxy |  | 6d | 2005-09-27 | 2005-10-05 | 72 | 6.85d | 0d |  | Kunal [75%] | 36h |
| 103 | 2.4.1.1.1.2 | Merging ApplicationService and SDKApplicationService |  | 5.75d | 2005-10-05 | 2005-10-13 | 102 | 6.85d | 0d |  | Kunal [75%] | 34.5h |
| 104 | 2.4.1.1.1.3 | Business methods secured at class level |  | 13.75d | 2005-09-22 | 2005-10-12 | 61 | 7.85d | 1d |  | Vinay [50%] | 55h |
| 105 | 2.4.1.1.1.4 | Merge Build file to have single generation process |  | 9d | 2005-10-13 | 2005-10-26 | 106 | 6.85d | 0d |  | Kunal [75%] | 54h |
| 106 | 2.4.1.1.1.5 | Code Review |  | 0.25d | 2005-10-13 | 2005-10-13 | 103, 104 | 6.85d | 0d |  | Kunal; Vinay; Eric | 6h |
| 107 | 2.4.1.1.1.6 | Flag to add writeable apis to generated code |  | 6d | 2005-10-13 | 2005-10-21 | 106 | 28.35d | 0d |  | Vinay [50%] | 24h |
| 108 | 2.4.1.1.1.7 | Turn Security off by default |  | 6d | 2005-10-21 | 2005-10-31 | 107 | 28.35d | 0d |  | Vinay [50%] | 24h |
| 109 | 2.4.1.1.1.8 | Enhance Security Error Reporting |  | 3.75d | 2005-10-31 | 2005-11-04 | 108 | 28.35d | 0d |  | Vinay [50%] | 15h |
| 110 | 2.4.1.1.1.9 | Code Merge and Cleanup |  | 5.75d | 2005-10-26 | 2005-11-03 | 105 | 6.85d | 0d |  | Kunal [75%] | 34.5h |
| 111 | 2.4.1.1.1.10 | Code Review |  | 0.25d | 2005-11-04 | 2005-11-04 | 110, 109 | 28.35d | 0d |  | Kunal; Vinay; Eric | 6h |
| 112 | 2.4.1.1.1.11 | Development and Unit Test Complete | milestone | 0d | 2005-11-04 | 2005-11-04 | 111 | 28.8d | 0d |  | Kunal; Vinay |  |

| ID | WBS | Task | Type | Duration | Start | Finish | Predecessors | Total slack | Free slack | Resources | Work |
| --- | --- | --- | --- | --- | --- | --- | --- | --- | --- | --- | --- |
| 113 | 2.4.1.1.2 | **Integration Test** |  | 7d | 2005-11-04 | 2005-11-16 |  | 28.8d |  |  | 82h |
| 114 | 2.4.1.1.2.1 | Develop Integration Tests |  | 2d | 2005-11-04 | 2005-11-08 | 112 | 28.8d | 0d | Kunal [75%] | 12h |
| 115 | 2.4.1.1.2.2 | Execute Integration Tests |  | 5d | 2005-11-08 | 2005-11-16 | 114, 97 | 35.8d | 0d | Kunal [75%]; Eric | 70h |
| 116 | 2.4.2 | **Iteration 2** |  | 32d | 2005-11-03 | 2005-12-22 |  | 3.85d |  |  | 128h |
| 117 | 2.4.2.1 | **Enhanced Logging** |  | 32d | 2005-11-03 | 2005-12-22 |  | 3.85d |  |  | 128h |
| 118 | 2.4.2.1.1 | Development and Unit Test |  | 25d | 2005-11-03 | 2005-12-13 | 110 | 6.85d | 0d | Vinay [50%] | 100h |
| 119 | 2.4.2.1.2 | Development and Unit Test Complete | milestone | 0d | 2005-12-13 | 2005-12-13 | 118 | 6.85d | 0d | Vinay [50%] |  |
| 120 | 2.4.2.1.3 | Develop Integration Test |  | 2d | 2005-12-13 | 2005-12-15 | 119 | 6.85d | 0d | Vinay [50%] | 8h |
| 121 | 2.4.2.1.4 | Execute Integration Tests |  | 5d | 2005-12-15 | 2005-12-22 | 120 | 6.85d | 0d | Vinay [50%] | 20h |
| 122 | 2.4.3 | **Iteration 3** |  | 42.55d | 2005-11-03 | 2006-01-10 |  | 28.8d |  |  | 408.52h |
| 123 | 2.4.3.1 | **Hibernate Upgrade** |  | 30d | 2005-11-03 | 2005-12-20 |  | 29.15d |  |  | 276.52h |
| 124 | 2.4.3.1.1 | Development and Unit Test |  | 20d | 2005-11-03 | 2005-12-06 | 79 | 29.15d | 0d | Resource 4 | 160h |
| 125 | 2.4.3.1.2 | Development and Unit Test Complete | milestone | 0d | 2005-12-06 | 2005-12-06 | 124 | 29.15d | 0d | Resource 4 |  |
| 126 | 2.4.3.1.3 | Regression Testing |  | 10d | 2005-12-06 | 2005-12-20 | 125 | 29.15d | 0d | Resource 4; Eric | 116.52h |
| 127 | 2.4.3.2 | **Authorization Caching** |  | 29d | 2005-11-28 | 2006-01-10 |  | 28.8d |  |  | 132h |
| 128 | 2.4.3.2.1 | Development and Unit Test |  | 15d | 2005-11-28 | 2005-12-19 | 88 | 35.8d | 0d | Kunal [75%] | 90h |
| 129 | 2.4.3.2.2 | Development and Unit Test Complete | milestone | 0d | 2005-12-19 | 2005-12-19 | 128 | 35.8d | 0d | Kunal [75%] |  |
| 130 | 2.4.3.2.3 | Develop Integration Test |  | 2d | 2005-12-19 | 2006-01-03 | 129 | 28.8d | 0d | Kunal [75%] | 12h |
| 131 | 2.4.3.2.4 | Execute Integration Test |  | 5d | 2006-01-03 | 2006-01-10 | 130 | 28.8d |  | Kunal [75%] | 30h |
| 132 | 2.4.4 | **Iteration 4** |  | 24.5d | 2005-12-20 | 2006-01-26 |  | 5.35d |  |  | 532h |
| 133 | 2.4.4.1 | **Document Creation** |  | 15.3d | 2005-12-20 | 2006-01-13 |  | 26.05d |  |  | 208h |
| 134 | 2.4.4.1.1 | SDK Programmers Guide |  | 10d | 2005-12-27 | 2006-01-10 | 126 | 26.05d | 0d | Eric | 80h |
| 135 | 2.4.4.1.2 | Review |  | 0.2d | 2006-01-11 | 2006-01-11 | 134 | 26.05d | 0d | Eric; Kunal; Vinay; Resource 4; Charles | 8h |
| 136 | 2.4.4.1.3 | Update from Review |  | 2d | 2006-01-11 | 2006-01-13 | 135 | 26.05d |  | Eric | 16h |
| 137 | 2.4.4.1.4 | CSM Guide For Application Developers |  | 10d | 2005-12-20 | 2006-01-05 | 126 | 29.15d | 0d | Resource 4 | 80h |
| 138 | 2.4.4.1.5 | Review |  | 0.2d | 2006-01-05 | 2006-01-06 | 137 | 29.15d | 0d | Eric; Kunal; Vinay; Resource 4; Charles | 8h |
| 139 | 2.4.4.1.6 | Update From Review |  | 2d | 2006-01-06 | 2006-01-10 | 138 | 29.15d | 0d | Resource 4 | 16h |
| 140 | 2.4.4.1.7 | Baseline/SignOff Documents | milestone | 0d | 2006-01-10 | 2006-01-10 | 139 | 29.15d |  | Resource 4 |  |

| ID | WBS | Task | Type | Duration | Start | Finish | Predecessors | Total slack | Free slack | Resources | Work |
| --- | --- | --- | --- | --- | --- | --- | --- | --- | --- | --- | --- |
| 141 | 2.4.4.2 | **QA Testing** |  | 23d | 2005-12-22 | 2006-01-26 |  | 3.85d |  |  | 324h |
| 142 | 2.4.4.2.1 | Technical Test Development |  | 10d | 2005-12-22 | 2006-01-09 | 121 | 6.85d | 0d | Vinay [50%] | 40h |
| 143 | 2.4.4.2.2 | Execution/Defect Fixes |  | 10d | 2006-01-09 | 2006-01-23 | 142 | 6.85d |  | Eric; Vinay [50%]; Kunal [75%]; Resource 4 | 260h |
| 144 | 2.4.4.2.3 | Testing Report Creation |  | 3d | 2006-01-23 | 2006-01-26 | 143 | 16.85d |  | Eric | 24h |
| 145 | 2.5 | **Transition Phase** |  | 16d | 2006-01-23 | 2006-02-14 |  | 3.85d |  |  | 259.71h |
| 146 | 2.5.1 | Deployment to Stage |  | 3d | 2006-01-23 | 2006-01-26 | 143 | 3.85d | 0d | Resource 4 | 24h |
| 147 | 2.5.2 | SOP Updates |  | 3d | 2006-01-26 | 2006-01-31 | 146 | 3.85d | 0d | Kunal [75%]; Vinay [50%] | 19.71h |
| 148 | 2.5.3 | Stage Testing |  | 5d | 2006-01-31 | 2006-02-07 | 147 | 3.85d | 0d | Eric; Vinay [50%]; Kunal [75%]; Resource 4 | 130h |
| 149 | 2.5.4 | Testing Report |  | 2d | 2006-02-07 | 2006-02-09 | 148 | 6.85d |  | Eric | 16h |
| 150 | 2.5.5 | **Deployment to Production** |  | 5d | 2006-02-07 | 2006-02-14 |  | 3.85d | 0d |  | 70h |
| 151 | 2.5.5.1 | Update Zope Site |  | 5d | 2006-02-07 | 2006-02-14 | 148 | 3.85d |  | Kunal [75%] | 30h |
| 152 | 2.5.5.2 | Work With Operations/ Finalize Builds |  | 5d | 2006-02-07 | 2006-02-14 | 148 | 3.85d |  | Resource 4 | 40h |
| 153 | 2.6 | CSM 3.1 Complete | milestone | 0d | 2006-02-14 | 2006-02-14 | 150 | 3.85d |  |  |  |
